# Flash-SDAI

Schedule from MS Project, 2016-04-16 to 2016-06-07, A marks actual dates.

## Calendars

- Standard: Mon-Fri 08:00-12:00, 13:00-17:00; Sat-Sun off. Exceptions (off unless hours are given): 2016-04-16 08:00-12:00, 13:00-17:00, 2016-04-23 08:00-12:00, 13:00-17:00, 2016-04-30 08:00-12:00, 13:00-17:00, 2016-05-07 08:00-12:00, 13:00-17:00, 2016-05-14 08:00-12:00, 13:00-17:00, 2016-05-21 08:00-12:00, 13:00-17:00, 2016-05-28 08:00-12:00, 13:00-17:00, 2016-06-04 08:00-12:00, 13:00-17:00.

## Resources

| Resource |
| --- |
| Gergana Kutleva |
| Nikolay Radkov |
| Stoyan Yanev |
| Deyvid Radenkov |
| Radoslav Gavrailov |

## Schedule

| ID | WBS | Task | Type | Duration | Start | Finish | Predecessors | Complete | Remaining | Total slack | Free slack | Constraint | Resources | Work | Actual work |
| --- | --- | --- | --- | --- | --- | --- | --- | --- | --- | --- | --- | --- | --- | --- | --- |
| 1 | 1 | **Initiating** |  | 2d | 2016-04-18 08:00 A | 2016-04-19 17:00 A |  | 100% |  |  |  |  |  | 80h | 80h |
| 2 | 1.1 | Define roles in team |  | 1d | 2016-04-18 08:00 A | 2016-04-18 17:00 A |  | 100% |  |  |  |  | Deyvid Radenkov; Gergana Kutleva; Nikolay Radkov; Radoslav Gavrailov; Stoyan Yanev | 40h | 40h |
| 3 | 1.2 | Roles in team defined | milestone | 0d | 2016-04-18 17:00 A | 2016-04-18 17:00 A | 2 | 100% |  |  |  |  |  |  |  |
| 4 | 1.3 | Kickoff meeting with customers |  | 1d | 2016-04-19 08:00 A | 2016-04-19 17:00 A | 3 | 100% |  |  |  |  | Deyvid Radenkov; Gergana Kutleva; Nikolay Radkov; Radoslav Gavrailov; Stoyan Yanev | 40h | 40h |
| 5 | 1.4 | Kickoff meeting completed | milestone | 0d | 2016-04-18 17:00 A | 2016-04-18 17:00 A | 3 | 100% |  |  |  |  |  |  |  |
| 6 | 2 | **Planning** |  | 3d | 2016-04-19 08:00 A | 2016-04-21 17:00 A |  | 100% |  |  |  |  |  | 24h | 24h |
| 7 | 2.1 | Prepare draft schedule |  | 3d | 2016-04-19 08:00 A | 2016-04-21 17:00 A | 2, 5 | 100% |  |  |  |  | Radoslav Gavrailov | 24h | 24h |
| 8 | 2.2 | Gantt chart completed | milestone | 0d | 2016-04-21 17:00 A | 2016-04-21 17:00 A | 7 | 100% |  |  |  |  | Radoslav Gavrailov |  |  |
| 9 | 3 | **Executing** |  | 44.12d | 2016-04-16 08:00 A | 2016-06-07 09:00 |  | 13% | 38.49d | 0d |  |  |  | 408h | 48h |
| 10 | 3.1 | Prepare Requirements document |  | 1w | 2016-04-22 08:00 A | 2016-04-29 17:00 A | 5, 7 | 100% |  |  |  |  | Gergana Kutleva | 48h | 48h |
| 11 | 3.2 | Prepare Architecture document |  | 2w | 2016-04-29 11:12 | 2016-05-13 11:12 | 10FS-1% |  |  | 0.93d | 0d |  | Nikolay Radkov | 96h |  |
| 12 | 3.3 | Develop source code for the project |  | 2w | 2016-05-12 09:36 | 2016-05-26 09:36 | 10FS-1%, 11FS-1% |  |  | 0.93d | 0d |  | Stoyan Yanev | 96h |  |
| 13 | 3.4 | Prepare Test Plan document |  | 2w | 2016-04-29 11:12 | 2016-05-13 11:12 | 10FS-1% |  |  | 11.72d | 0d |  | Deyvid Radenkov | 96h |  |
| 14 | 3.5 | Requirements document completed | milestone | 0d | 2016-04-29 17:00 | 2016-04-29 17:00 | 10 |  |  | 32.12d | 31.2d |  |  |  |  |
| 15 | 3.6 | Architecture document completed | milestone | 0d | 2016-05-13 11:12 | 2016-05-13 11:12 | 11 |  |  | 20.73d | 19.8d |  |  |  |  |
| 16 | 3.7 | Development of application completed | milestone | 0d | 2016-05-26 09:36 | 2016-05-26 09:36 | 12 |  |  | 0.93d | 0d |  |  |  |  |
| 17 | 3.8 | Test plan completed | milestone | 0d | 2016-05-13 11:12 | 2016-05-13 11:12 | 13 |  |  | 11.72d | 10.8d |  |  |  |  |
| 18 | 3.9 | Test the created solution according to Test Plan document |  | 3d | 2016-05-26 09:36 | 2016-05-30 09:36 | 16, 17 |  |  | 0.93d | 0d |  | Deyvid Radenkov | 24h |  |
| 19 | 3.10 | Prepare Test Summary and Test Report Documents |  | 1w | 2016-05-30 09:36 | 2016-06-06 09:36 | 18 |  |  | 0.93d | 0d |  | Deyvid Radenkov | 48h |  |
| 20 | 3.11 | Test Symmary and Test Report Documents completed | milestone | 0d | 2016-04-16 08:00 | 2016-04-16 08:00 |  |  |  | 44.12d |  |  |  |  |  |
| 21 | 3.12 | **Hold Meetings** |  | 44.12d | 2016-04-16 08:00 A | 2016-06-07 09:00 |  | 40% | 26.48d | 0d |  |  |  |  |  |
| 22 | 3.12.1 | Hold Meetings 1 |  | 1h | 2016-04-16 08:00 A | 2016-04-16 09:00 A |  | 100% |  |  |  | finish no earlier than 2016-04-16 17:00 |  |  |  |
| 23 | 3.12.2 | Hold Meetings 2 |  | 1h | 2016-04-19 08:00 A | 2016-04-19 09:00 A |  | 100% |  |  |  | start no earlier than 2016-04-19 08:00 |  |  |  |
| 24 | 3.12.3 | Hold Meetings 3 | milestone | 0h | 2016-04-23 08:00 A | 2016-04-23 08:00 A |  | 100% |  |  |  | finish no earlier than 2016-04-23 17:00 |  |  |  |
| 25 | 3.12.4 | Hold Meetings 4 |  | 1h | 2016-04-26 08:00 A | 2016-04-26 09:00 A |  | 100% |  |  |  | start no earlier than 2016-04-26 08:00 |  |  |  |
| 26 | 3.12.5 | Hold Meetings 5 |  | 1h | 2016-04-30 08:00 A | 2016-04-30 09:00 A |  | 100% |  |  |  | start no earlier than 2016-04-30 08:00 |  |  |  |
| 27 | 3.12.6 | Hold Meetings 6 |  | 1h | 2016-05-03 08:00 A | 2016-05-03 09:00 A |  | 100% |  |  |  | start no earlier than 2016-05-03 08:00 |  |  |  |
| 28 | 3.12.7 | Hold Meetings 7 |  | 1h | 2016-05-07 08:00 A | 2016-05-07 09:00 A |  | 100% |  |  |  | start no earlier than 2016-05-07 08:00 |  |  |  |
| 29 | 3.12.8 | Hold Meetings 8 |  | 1h | 2016-05-10 08:00 | 2016-05-10 09:00 |  |  |  | 24d |  | start no earlier than 2016-05-10 08:00 |  |  |  |
| 30 | 3.12.9 | Hold Meetings 9 |  | 1h | 2016-05-14 08:00 | 2016-05-14 09:00 |  |  |  | 20d |  | start no earlier than 2016-05-14 08:00 |  |  |  |
| 31 | 3.12.10 | Hold Meetings 10 |  | 1h | 2016-05-17 08:00 | 2016-05-17 09:00 |  |  |  | 18d |  | start no earlier than 2016-05-17 08:00 |  |  |  |
| 32 | 3.12.11 | Hold Meetings 11 |  | 1h | 2016-05-21 08:00 | 2016-05-21 09:00 |  |  |  | 14d |  | start no earlier than 2016-05-21 08:00 |  |  |  |
| 33 | 3.12.12 | Hold Meetings 12 |  | 1h | 2016-05-24 08:00 | 2016-05-24 09:00 |  |  |  | 12d |  | start no earlier than 2016-05-24 08:00 |  |  |  |
| 34 | 3.12.13 | Hold Meetings 13 |  | 1h | 2016-05-28 08:00 | 2016-05-28 09:00 |  |  |  | 8d |  | start no earlier than 2016-05-28 08:00 |  |  |  |
| 35 | 3.12.14 | Hold Meetings 14 |  | 1h | 2016-05-31 08:00 | 2016-05-31 09:00 |  |  |  | 6d |  | start no earlier than 2016-05-31 08:00 |  |  |  |
| 36 | 3.12.15 | Hold Meetings 15 |  | 1h | 2016-06-04 08:00 | 2016-06-04 09:00 |  |  |  | 2d |  | start no earlier than 2016-06-04 08:00 |  |  |  |
| 37 | 3.12.16 | Hold Meetings 16 |  | 1h | 2016-06-07 08:00 | 2016-06-07 09:00 |  |  |  | 0d |  | start no earlier than 2016-06-07 08:00 |  |  |  |

| ID | WBS | Task | Type | Duration | Start | Finish | Predecessors | Total slack |
| --- | --- | --- | --- | --- | --- | --- | --- | --- |
| 38 | 4 | **Closing** |  | 0d | 2016-06-06 09:36 | 2016-06-06 09:36 |  | 0.93d |
| 39 | 4.1 | Project completed | milestone | 0d | 2016-06-06 09:36 | 2016-06-06 09:36 | 14, 15, 16, 19 | 0.93d |
